# Softtech PİP Şablonu

How a schedule from MS Project changed from version to version. A marks actual dates.

## Version 1 (saved 2017-10-11, file Plan-6007-Kondor V1.mpp)

| ID | WBS | Task | Duration | Start | Finish | Complete | Total float | Constraint |
| --- | --- | --- | --- | --- | --- | --- | --- | --- |
| 1 | 1 | **Kondor+ Programı Çalışma Sürekliliği ve Versiyon Yükseltme** | 699.75d? | 2015-04-17 A | 2017-12-21 | 16% | 0d |  |
| 2 |  | RPM Geçmiş Kayıtlar | 273.61d? | 2015-04-17 A | 2017-10-31 | 32% | 87.25d | finish no earlier than 2017-10-31 |
| 3 | 1.2 | **Yönetim** | 36.75d? | 2017-11-01 | 2017-12-21 |  | 0d |  |
| 4 |  | Proje Yönetim Faaliyetleri | 36.75d? | 2017-11-01 | 2017-12-21 |  | 0d | start no earlier than 2017-11-01 |
| 5 |  | Kapsam Belirleme | 5.87d? | 2017-11-01 | 2017-11-08 |  | 30.88d | start no earlier than 2017-11-01 |
| 6 | 1.3 | **Kondor+ Programı Çalışma Sürekliliği ve Versiyon Yükseltme** | 131.13d? | 2017-06-06 | 2017-12-06 |  | 11.62d |  |
| 7 | 1.3.1 | **Analiz** | 67.13d? | 2017-09-04 | 2017-12-06 |  | 11.62d |  |
| 8 |  | Analiz | 67.13d? | 2017-09-04 | 2017-12-06 |  | 11.62d | start no earlier than 2017-09-04 |
| 9 | 1.3.2 | **Geliştirme** | 123d | 2017-06-06 | 2017-11-23 |  | 19.75d |  |
| 10 |  | Geliştirme | 123d | 2017-06-06 | 2017-11-23 |  | 70.25d | start no earlier than 2017-06-06 |
| 11 | 1.3.3 | **Test** | 60d | 2017-09-04 | 2017-11-24 |  | 18.75d |  |
| 12 |  | Test | 60d | 2017-09-04 | 2017-11-24 |  | 69.25d | start no earlier than 2017-09-04 |
| 13 | 1.3.4 | **Geçiş** | 0d? | 2017-11-30 | 2017-11-30 |  | 15.75d |  |
| 14 |  | İzleme ve Yaygınlaşma | 0d? | 2017-11-30 | 2017-11-30 |  | 129d | start no earlier than 2017-11-30 |

## Version 2 (saved 2017-10-16, file Plan-6007-Kondor V1.mpp)

Last finish 2017-12-21 → 2017-11-30 (-21d).

Changed:

| ID | Task | Start | Finish | Duration | Total float | Other |
| --- | --- | --- | --- | --- | --- | --- |
| 1 | **Kondor+ Programı Çalışma Sürekliliği ve Versiyon Yükseltme** |  | 2017-12-21 → 2017-11-30 (-21d) | 699.75d? → 684d? |  |  |
| 3 | **Yönetim** | 2017-11-01 → 2017-10-02 (-30d) | 2017-12-21 → 2017-11-21 (-30d) |  | 0d → 6.25d |  |
| 4 | Proje Yönetim Faaliyetleri | 2017-11-01 → 2017-10-02 (-30d) | 2017-12-21 → 2017-11-21 (-30d) |  | 0d → 6.25d | constraint start no earlier than 2017-11-01 → start no earlier than 2017-10-02 |
| 6 | **Kondor+ Programı Çalışma Sürekliliği ve Versiyon Yükseltme** |  | 2017-12-06 → 2017-11-30 (-6d) | 131.13d? → 127d? | 11.62d → 0d |  |
| 7 | **Analiz** | 2017-09-04 → 2017-08-28 (-7d) | 2017-12-06 → 2017-11-29 (-7d) |  | 11.62d → 0.87d |  |
| 8 | Analiz | 2017-09-04 → 2017-08-28 (-7d) | 2017-12-06 → 2017-11-29 (-7d) |  | 11.62d → 0.87d | constraint start no earlier than 2017-09-04 → start no earlier than 2017-08-28 |

## Version 3 (saved 2017-11-03, file Plan-6007-Kondor V1.mpp)

Last finish stays 2017-11-30.

Changed:

| ID | Task | Finish | Duration | Total float |
| --- | --- | --- | --- | --- |
| 7 | **Analiz** | 2017-11-29 → 2017-11-20 (-9d) | 67.13d? → 60.13d? | 0.87d → 7.87d |
| 8 | Analiz | 2017-11-29 → 2017-11-20 (-9d) | 67.13d? → 60.13d? | 0.87d → 7.87d |
| 9 | **Geliştirme** | 2017-11-23 → 2017-11-20 (-3d) | 123d → 120d | 4d → 7d |
| 10 | Geliştirme | 2017-11-23 → 2017-11-20 (-3d) | 123d → 120d | 4d → 7d |

## Version 4 (saved 2017-11-03, file Plan-6007-Kondor V1.mpp)

Last finish stays 2017-11-30. Complete tasks 0 → 1.

Changed:

| ID | Task | Finish | Complete | Total float |
| --- | --- | --- | --- | --- |
| 1 | **Kondor+ Programı Çalışma Sürekliliği ve Versiyon Yükseltme** |  | 16% → 49% |  |
| 2 | RPM Geçmiş Kayıtlar | 2017-10-31 A | 32% → 100% | 21d → none |

## Version 5 (saved 2017-12-01, file Plan-6007-Kondor V2.mpp)

Last finish 2017-11-30 → 2018-01-29 (+60d).

Changed:

| ID | Task | Start | Finish | Duration | Complete | Total float |
| --- | --- | --- | --- | --- | --- | --- |
| 1 | **Kondor+ Programı Çalışma Sürekliliği ve Versiyon Yükseltme** |  | 2017-11-30 → 2018-01-29 (+60d) | 684d? → 726.13d? | 49% → 55% |  |
| 3 | **Yönetim** | 2017-10-02 → 2017-11-01 A (+30d) | 2017-11-21 → 2017-12-25 (+34d) | 36.75d? → 38.75d? | 0% → 21% | 6.25d → 24.38d |
| 4 | Proje Yönetim Faaliyetleri | 2017-10-02 → 2017-11-03 A (+32d) | 2017-11-21 → 2017-12-25 (+34d) |  | 0% → 24% | 6.25d → 24.38d |
| 6 | **Kondor+ Programı Çalışma Sürekliliği ve Versiyon Yükseltme** | 2017-06-06 A | 2017-11-30 → 2018-01-29 (+60d) | 127d? → 169.13d? | 0% → 9% |  |
| 7 | **Analiz** | 2017-08-28 → 2017-11-06 A (+70d) | 2017-11-20 → 2018-01-29 (+70d) |  | 0% → 37% | 7.87d → 0d |
| 8 | Analiz | 2017-08-28 → 2017-11-06 A (+70d) | 2017-11-20 → 2018-01-29 (+70d) |  | 0% → 37% | 7.87d → 0d |
