# Softtech PİP Şablonu

How a schedule from MS Project changed from version to version. A marks actual dates.

## Version 1 (saved 2017-10-11, file Plan-6010-Akreditif V1.mpp)

| ID | WBS | Task | Duration | Start | Finish | Complete | Total float | Constraint |
| --- | --- | --- | --- | --- | --- | --- | --- | --- |
| 1 | 1 | **Akreditifli ithalat/ihracat** | 499d? | 2016-08-01 A | 2018-06-29 | 17% | 0d |  |
| 2 |  | RPM Geçmiş Kayıtlar | 88d? | 2016-08-01 A | 2017-10-31 A | 100% |  | finish no earlier than 2017-10-31 |
| 3 | 1.2 | **Yönetim** | 0d? | 2017-11-01 | 2017-11-01 |  | 172d |  |
| 4 |  | Proje Yönetim Faaliyetleri | 0d? | 2017-11-01 | 2017-11-01 |  | 172d | start no earlier than 2017-11-01 |
| 5 | 1.3 | **Akreditifli İthalat** | 189d? | 2017-10-09 | 2018-06-29 |  | 0d |  |
| 6 | 1.3.1 | **Milestones** | 162d? | 2017-10-09 | 2018-05-23 |  | 27d |  |
| 7 |  | İGG | 0d | 2017-10-09 | 2017-10-09 |  | 344d | start no earlier than 2017-10-09 |
| 8 |  | TGG | 0d? | 2017-10-23 | 2017-10-23 |  | 334d | start no earlier than 2017-10-23 |
| 9 |  | THOGG | 0d? | 2017-12-25 | 2017-12-25 |  | 289d | start no earlier than 2017-12-25 |
| 10 |  | ÜHOGG-Pilot | 0d? | 2018-02-21 | 2018-02-21 |  | 247d | start no earlier than 2018-02-21 |
| 11 |  | ÜHOGG-Yaygınlaşma | 0d? | 2018-05-23 | 2018-05-23 |  | 182d | start no earlier than 2018-05-23 |
| 12 | 1.3.2 | **Analiz** | 87.25d? | 2017-11-01 | 2018-03-02 |  | 84.75d |  |
| 13 |  | Analiz | 87.25d? | 2017-11-01 | 2018-03-02 |  | 239.75d | start no earlier than 2017-11-01 |
| 14 | 1.3.3 | **Geliştirme** | 166.56d? | 2017-11-01 | 2018-06-21 |  | 5.44d |  |
| 15 |  | Geliştirme | 150d | 2017-11-01 | 2018-05-29 |  | 22d | start no earlier than 2017-11-01 |
| 16 |  | Geliştirme | 166.56d? | 2017-11-01 | 2018-06-21 |  | 160.44d | start no earlier than 2017-11-01 |
| 17 |  | Mimari | 3d? | 2017-11-01 | 2017-11-03 |  | 324d | start no earlier than 2017-11-01 |
| 18 | 1.3.4 | **Test** | 36d? | 2017-11-01 | 2017-12-20 |  | 136d |  |
| 19 |  | Test | 36d? | 2017-11-01 | 2017-12-20 |  | 291d | start no earlier than 2017-11-01 |
| 20 | 1.3.5 | **Geçiş** | 0d? | 2018-06-29 | 2018-06-29 |  | 0d |  |
| 21 |  | İzleme ve Yaygınlaşma | 0d? | 2018-06-29 | 2018-06-29 |  | 0d | start no earlier than 2018-06-29 |

## Version 2 (saved 2017-11-03, file Plan-6010-Akreditif V1.mpp)

Last finish stays 2018-06-29.

Added:

| ID | Task | Duration | Start | Finish | Constraint | Resources |
| --- | --- | --- | --- | --- | --- | --- |
| 14 | Analiz | 90d? | 2017-11-01 | 2018-03-06 | start no earlier than 2017-11-01 | Serhat Değirmenci |
| 15 | Analiz-Komisyon | 94.5d? | 2017-11-01 | 2018-03-13 | start no earlier than 2017-11-01 | Serhat Değirmenci |
| 16 | Analiz-Internet | 30d? | 2017-11-01 | 2017-12-12 | start no earlier than 2017-11-01 | Serhat Değirmenci |
| 20 | Geliştirme | 114d | 2017-11-01 | 2018-04-09 | start no earlier than 2017-11-01 | Serhat Değirmenci |
| 21 | Geliştirme | 114d | 2017-11-01 | 2018-04-09 | start no earlier than 2017-11-01 | Serhat Değirmenci |
| 22 | Geliştirme | 114d | 2017-11-01 | 2018-04-09 | start no earlier than 2017-11-01 | Serhat Değirmenci |
| 23 | Geliştirme-Mirsis | 38d? | 2017-11-01 | 2017-12-22 | start no earlier than 2017-11-01 | Serhat Değirmenci |
| 25 | Geliştirme-Komisyon | 25d? | 2017-11-01 | 2017-12-05 | start no earlier than 2017-11-01 | Serhat Değirmenci |
| 26 | Geliştirme-Fiyatlama | 100d? | 2017-11-01 | 2018-03-20 | start no earlier than 2017-11-01 | Serhat Değirmenci |
| 27 | Geliştirme-Pega | 3.5d | 2017-11-01 | 2017-11-06 | start no earlier than 2017-11-01 | Serhat Değirmenci |
| 28 | Geliştirme-Ürün | 40d | 2017-11-01 | 2017-12-26 | start no earlier than 2017-11-01 | Serhat Değirmenci |
| 29 | Geliştirme-Portföy | 40d | 2017-11-01 | 2017-12-26 | start no earlier than 2017-11-01 | Serhat Değirmenci |
| 30 | Geliştirme-SK | 10d | 2017-11-01 | 2017-11-14 | start no earlier than 2017-11-01 | Serhat Değirmenci |
| 31 | Geliştirme-İZ | 60d | 2017-11-01 | 2018-01-23 | start no earlier than 2017-11-01 | Serhat Değirmenci |

Changed:

| ID | Task | Finish | Duration | Total float | Other |
| --- | --- | --- | --- | --- | --- |
| 2 | RPM Geçmiş Kayıtlar | 2017-10-31 A → 2017-09-22 A (-39d) | 88d? → 300d |  | constraint finish no earlier than 2017-10-31 → start no earlier than 2016-08-01 |
| 3 | **Yönetim** | 2017-11-01 → 2018-04-24 (+174d) | 0d? → 125d? | 172d → 47d |  |
| 4 | Proje Yönetim Faaliyetleri | 2017-11-01 → 2018-04-24 (+174d) | 0d? → 125d? | 172d → 47d |  |
| 12 | **Analiz** | 2018-03-02 → 2018-03-13 (+11d) | 87.25d? → 94.5d? | 84.75d → 77.5d |  |
| 13 | Analiz | 2018-03-02 → 2018-03-13 (+11d) | 87.25d? → 94.5d? | 239.75d → 77.5d |  |
| 17 | **Geliştirme** | 2018-06-21 → 2018-04-09 (-73d) | 166.56d? → 114d? | 5.44d → 58d |  |
| 18 | Geliştirme | 2018-05-29 → 2018-04-09 (-50d) | 150d → 114d | 22d → 58d |  |
| 19 | Geliştirme | 2018-06-21 → 2018-04-09 (-73d) | 166.56d? → 114d | 160.44d → 58d |  |
| 24 | Geliştirme-Vizyon | 2017-11-03 → 2017-12-22 (+49d) | 3d? → 38d? | 324d → 134d | was named Mimari |
| 32 | **Test** | 2017-12-20 → 2018-03-15 (+85d) | 36d? → 96.5d? | 136d → 75.5d |  |
| 33 | Test | 2017-12-20 → 2018-03-15 (+85d) | 36d? → 96.5d? | 291d → 75.5d |  |

## Version 3 (saved 2017-11-03, file Plan-6010-Akreditif V1.mpp)

Last finish stays 2018-06-29.

Changed:

| ID | Task | Other |
| --- | --- | --- |
| 14 | Analiz | resources Serhat Değirmenci → İrfan Bağcı |
| 18 | Geliştirme | resources Serhat Değirmenci → Ali Savran |
| 19 | Geliştirme | resources Serhat Değirmenci → Tülay Akarsu |
| 20 | Geliştirme | resources Serhat Değirmenci → Mehmet Emin Kahyatepe |
| 21 | Geliştirme | resources Serhat Değirmenci → Oktay Ardeniz |
| 23 | Geliştirme-Mirsis | resources Serhat Değirmenci → OSMAN DEMİRTAŞ |
| 24 | Geliştirme-Vizyon | resources Serhat Değirmenci → OYA SÜER |

## Version 4 (saved 2017-11-07, file Plan-6010-Akreditif V1.mpp)

Last finish stays 2018-06-29.

Changed:

| ID | Task | Other |
| --- | --- | --- |
| 15 | Analiz-Komisyon | resources Serhat Değirmenci → Aslı Başer - Softtech |

## Version 5 (saved 2017-12-01, file Plan-6010-Akreditif V2.mpp)

Last finish stays 2018-06-29.

Changed:

| ID | Task | Start | Finish | Duration | Complete | Total float |
| --- | --- | --- | --- | --- | --- | --- |
| 1 | **Akreditifli ithalat/ihracat** |  |  |  | 17% → 25% |  |
| 3 | **Yönetim** | 2017-11-01 → 2017-11-03 A (+2d) | 2018-04-24 → 2018-04-26 (+2d) |  | 0% → 5% | 47d → 45d |
| 4 | Proje Yönetim Faaliyetleri | 2017-11-01 → 2017-11-03 A (+2d) | 2018-04-24 → 2018-04-26 (+2d) |  | 0% → 5% | 47d → 45d |
| 5 | **Akreditifli İthalat** | 2017-10-09 A |  |  | 0% → 10% |  |
| 12 | **Analiz** | 2017-11-01 A | 2018-03-13 → 2018-03-22 (+9d) | 94.5d? → 101.5d? | 0% → 6% | 77.5d → 70.5d |
| 13 | Analiz | 2017-11-01 → 2017-11-10 A (+9d) | 2018-03-13 → 2018-03-22 (+9d) |  | 0% → 8% | 77.5d → 70.5d |
| 14 | Analiz | 2017-11-01 → 2017-11-06 A (+5d) | 2018-03-06 → 2018-03-09 (+3d) |  | 0% → 12% | 82d → 79d |
| 15 | Analiz-Komisyon | 2017-11-01 → 2017-11-07 A (+6d) | 2018-03-13 → 2018-03-19 (+6d) |  | 0% → 2% | 77.5d → 73.5d |
| 17 | **Geliştirme** | 2017-11-01 A | 2018-04-09 → 2018-05-02 (+23d) | 114d? → 131d? | 0% → 13% | 58d → 41d |
| 18 | Geliştirme | 2017-11-01 → 2017-11-24 A (+23d) | 2018-04-09 → 2018-05-02 (+23d) |  | 0% → 19% | 58d → 41d |
| 19 | Geliştirme | 2017-11-01 → 2017-11-15 A (+14d) | 2018-04-09 → 2018-04-23 (+14d) |  | 0% → 21% | 58d → 48d |
| 20 | Geliştirme | 2017-11-01 → 2017-11-09 A (+8d) | 2018-04-09 → 2018-04-17 (+8d) |  | 0% → 21% | 58d → 52d |
| 21 | Geliştirme | 2017-11-01 → 2017-11-24 A (+23d) | 2018-04-09 → 2018-05-02 (+23d) |  | 0% → 11% | 58d → 41d |
| 23 | Geliştirme-Mirsis | 2017-11-01 → 2017-11-27 A (+26d) | 2017-12-22 → 2018-01-17 (+26d) |  | 0% → 29% | 134d → 116d |
| 24 | Geliştirme-Vizyon | 2017-11-01 → 2017-11-15 A (+14d) | 2017-12-22 → 2018-01-05 (+14d) |  | 0% → 58% | 134d → 124d |

## Version 6 (saved 2018-01-02, file Plan-6010-Akreditif V4.mpp)

Last finish stays 2018-06-29.

Added:

| ID | Task | Duration | Start | Finish | Constraint | Resources |
| --- | --- | --- | --- | --- | --- | --- |
| 15 | Analiz | 10d? | 2017-12-26 A | 2018-01-08 | start no earlier than 2017-12-01 | Mehtap Özdemir |

Changed:

| ID | Task | Start | Finish | Duration | Complete | Total float | Other |
| --- | --- | --- | --- | --- | --- | --- | --- |
| 1 | **Akreditifli ithalat/ihracat** |  |  |  | 25% → 35% |  |  |
| 3 | **Yönetim** |  |  |  | 5% → 13% |  |  |
| 4 | Proje Yönetim Faaliyetleri |  |  |  | 5% → 13% |  |  |
| 5 | **Akreditifli İthalat** |  |  |  | 10% → 22% |  |  |
| 12 | **Analiz** |  |  |  | 6% → 16% |  |  |
| 13 | Analiz |  |  |  | 8% → 32% |  |  |
| 14 | Analiz |  | 2018-03-09 → 2018-02-16 (-21d) | 90d? → 75d? | 12% → 14% | 79d → 94d |  |
| 16 | Analiz-Komisyon |  |  |  | 2% → 6% |  |  |
| 18 | **Geliştirme** |  |  |  | 13% → 26% |  |  |
| 19 | Geliştirme |  |  |  | 19% → 38% |  |  |
| 20 | Geliştirme |  |  |  | 21% → 41% |  |  |
| 21 | Geliştirme |  |  |  | 21% → 41% |  |  |
| 22 | Geliştirme |  |  |  | 11% → 20% |  |  |
| 24 | Geliştirme-Mirsis |  |  |  | 29% → 84% |  |  |
| 25 | Geliştirme-Vizyon |  | 2018-01-05 → 2018-01-12 (+7d) | 38d? → 43d? | 58% → 99% | 124d → 119d |  |
| 27 | Geliştirme-Fiyatlama |  | 2018-03-20 → 2018-02-20 (-28d) | 100d? → 80d? |  | 72d → 92d |  |
| 28 | Geliştirme-Pega | 2017-11-01 → 2017-12-28 A (+57d) | 2017-11-06 → 2018-01-30 (+85d) | 3.5d → 23.5d | 0% → 38% | 168.5d → 107.5d | constraint start no earlier than 2017-11-01 → start no earlier than 2017-12-01; resources Serhat Değirmenci → EMİNE BAHÇE |
