# Softtech PİP Şablonu

How a schedule from MS Project changed from version to version. A marks actual dates.

## Version 1 (saved 2018-01-12, file Plan-6086-Kadro v3.mpp)

| ID | WBS | Task | Duration | Start | Finish | Predecessors | Complete | Total float | Constraint |
| --- | --- | --- | --- | --- | --- | --- | --- | --- | --- |
| 1 | 1 | **Kadro Uygulamaları** | 402d | 2017-05-08 A | 2018-11-19 |  | 60% | 0d |  |
| 2 | 1.1 | **RPM Geçmiş Kayıtları** | 127d | 2017-05-08 A | 2017-10-31 A |  | 100% |  |  |
| 3 |  | Proje Yönetim Faaliyetleri | 127d | 2017-05-08 A | 2017-10-31 A |  | 100% |  | finish no earlier than 2017-10-31 |
| 4 |  | Geliştirme Eski Kayıt-EO | 127d | 2017-05-08 A | 2017-10-31 A |  | 100% |  | finish no earlier than 2017-10-31 |
| 5 |  | Geliştirme Eski Kayıt-MD | 127d | 2017-05-08 A | 2017-10-31 A |  | 100% |  | finish no earlier than 2017-10-31 |
| 6 |  | Geliştirme Eski Kayıt-RK | 127d | 2017-05-08 A | 2017-10-31 A |  | 100% |  | finish no earlier than 2017-10-31 |
| 7 |  | Analiz Eski Kayıt-MO | 127d | 2017-05-08 A | 2017-10-31 A |  | 100% |  | finish no earlier than 2017-10-31 |
| 8 |  | Analiz Eski Kayıt-MS | 127d | 2017-05-08 A | 2017-10-31 A |  | 100% |  | finish no earlier than 2017-10-31 |
| 9 |  | Analiz Eski Kayıt-SA | 127d | 2017-05-08 A | 2017-10-31 A |  | 100% |  | finish no earlier than 2017-10-31 |
| 10 |  | Yonetim Eski Kayıt | 127d | 2017-05-08 A | 2017-10-31 A |  | 100% |  | finish no earlier than 2017-10-31 |
| 11 | 1.2 | **Yönetim** | 140d | 2017-11-01 A | 2018-05-14 |  | 24% | 135d |  |
| 12 |  | Proje Yönetim Faaliyetleri-GE | 130d | 2017-11-03 A | 2018-05-02 |  | 13% | 8d | start no earlier than 2017-11-01 |
| 13 |  | Proje Yönetim Faaliyetleri-KO | 130d | 2017-11-01 | 2018-04-30 |  |  | 10d | start no earlier than 2017-11-01 |
| 14 |  | Yönetici Eforları-AA | 130d | 2017-11-03 A | 2018-05-02 |  | 39% | 8d | finish no earlier than 2018-04-30 |
| 15 |  | Yönetici Eforları-TB | 130d | 2017-11-09 A | 2018-05-08 |  | 30% | 4d | finish no earlier than 2018-04-30 |
| 16 |  | Yönetici Eforları-MO | 130d | 2017-11-15 A | 2018-05-14 |  | 39% | 135d | finish no earlier than 2018-04-30 |
| 17 | 1.3 | **Kadro Uygulaması 1. Faz** | 46d | 2017-11-01 A | 2018-01-02 |  | 70% | 229d |  |
| 18 | 1.3.1 | **Analiz** | 44d | 2017-11-03 A | 2018-01-02 A |  | 100% |  |  |
| 19 |  | 1. Faz Analiz Destek-SA | 44d | 2017-11-03 A | 2018-01-02 A |  | 100% |  | finish no earlier than 2017-12-29 |
| 20 |  | 1. Faz Analiz Destek-MS | 29d | 2017-11-24 A | 2018-01-02 A |  | 100% |  | finish no earlier than 2017-12-29 |
| 21 | 1.3.2 | **Yazılım Geliştirme** | 45d | 2017-11-02 A | 2018-01-02 A |  | 100% |  |  |
| 22 |  | Kadro 1. Faz UAT Destek EO | 45d | 2017-11-02 A | 2018-01-02 A |  | 100% |  | start no earlier than 2017-11-01 |
| 23 |  | Kadro 1. Faz UAT Destek MD | 45d | 2017-11-02 A | 2018-01-02 A |  | 100% |  | start no earlier than 2017-11-01 |
| 24 | 1.3.3 | **Test Çalışmaları** | 35d | 2017-11-01 | 2017-12-19 |  |  | 240d |  |
| 25 |  | Teste Hazırlık-Raporlama | 35d | 2017-11-01 | 2017-12-19 |  |  | 119.75d | start no earlier than 2017-11-01 |
| 26 |  | Testlerin Gerçekleştirilmesi | 35d | 2017-11-01 | 2017-12-19 |  |  | 119.75d | start no earlier than 2017-11-01 |
| 27 |  | (MS) Teslimat Kapanışı | 1d | 2018-01-02 A | 2018-01-02 A |  | 100% |  | start no earlier than 2017-12-31 |
| 28 | 1.4 | **Kadro Simülasyon** | 272d | 2017-11-06 A | 2018-11-19 |  | 13% | 0d |  |
| 29 | 1.4.1 | **Analiz** | 187d | 2017-11-06 A | 2018-07-23 |  | 25% | 0d |  |
| 30 |  | Kadro Simüklasyon Analiz-SA | 42d | 2017-11-07 A | 2018-01-02 |  | 27% | 9d | start no earlier than 2017-11-01 |
| 31 |  | Kadro Simüklasyon Analiz-MS | 43d | 2017-11-06 A | 2018-01-02 A |  | 100% |  | start no earlier than 2017-11-01 |
| 32 |  | Analiz Rezerve | 137d | 2018-01-12 | 2018-07-23 |  |  | 0d | start no earlier than 2018-01-12 |
| 33 | 1.4.2 | **Yazılım Geliştirme** | 45d | 2018-07-24 | 2018-09-24 | 29 |  | 0d |  |
| 34 |  | Kadro Simülasyon Yazılım-EO | 45d | 2018-07-24 | 2018-09-24 |  |  | 0d |  |
| 35 |  | Kadro Simülasyon Yazılım-RK | 45d | 2018-07-24 | 2018-09-24 |  |  | 0d | start no earlier than 2017-11-01 |
| 36 |  | Kadro Simülasyon Yazılım-MD | 45d | 2018-07-24 | 2018-09-24 |  |  | 0d | start no earlier than 2017-11-01 |
| 37 | 1.4.3 | **Test Çalışmaları** | 55d | 2018-09-04 | 2018-11-19 | 33FS-15d |  | 0d |  |
| 38 |  | Teste Hazırlık-Raporlama | 28d | 2018-09-04 | 2018-10-11 |  |  | 27d | start no earlier than 2017-11-01 |
| 39 |  | Testlerin Gerçekleştirilmesi | 40d | 2018-09-25 | 2018-11-19 | 33 |  | 0d | start no earlier than 2017-11-01 |
| 40 |  | (MS) Teslimat Kapanışı | 0d | 2018-03-30 | 2018-03-30 |  |  | 32d | start no earlier than 2018-03-30 |
| 41 |  | (MS) Proje Kapanış | 0d | 2018-04-30 | 2018-04-30 |  |  | 11d | start no earlier than 2018-04-30 |

## Version 2 (saved 2018-02-01, file Plan-6086-Kadro v4.mpp)

Last finish 2018-11-19 → 2018-06-29 (-143d). Complete tasks 14 → 13.

Added:

| ID | Task | Duration | Start | Finish | Constraint | Resources |
| --- | --- | --- | --- | --- | --- | --- |
| 17 | Proje Yönetim Faaliyetleri-SD | 38.59d? | 2018-02-01 | 2018-03-27 | start no earlier than 2018-02-01 | Serhat Değirmenci |

Changed:

| ID | Task | Start | Finish | Duration | Complete | Total float | Predecessors | Other |
| --- | --- | --- | --- | --- | --- | --- | --- | --- |
| 1 | **Kadro Uygulamaları** |  | 2018-11-19 → 2018-06-29 (-143d) | 402d → 300d? | 60% → 65% |  |  |  |
| 11 | **Yönetim** |  |  | 140d → 140d? | 24% → 47% | 135d → 33d |  |  |
| 12 | Proje Yönetim Faaliyetleri-GE |  | 2018-05-02 → 2018-02-01 A (-90d) | 130d → 66d | 13% → 100% | 8d → none |  |  |
| 14 | Yönetici Eforları-AA |  |  |  | 39% → 58% | 8d → 41d |  |  |
| 15 | Yönetici Eforları-TB |  |  |  | 30% → 80% | 4d → 37d |  |  |
| 18 | **Kadro Uygulaması 1. Faz** |  | 2018-01-02 → 2018-01-19 (+17d) | 46d → 58.39d | 70% → 53% | 229d → 114.61d |  |  |
| 19 | **Analiz** |  | 2018-01-02 A → 2018-01-19 (+17d) | 44d → 56.39d | 100% → 60% | none → 114.61d |  |  |
| 20 | 1. Faz Analiz Destek-SA |  | 2018-01-02 A → 2018-01-02 |  | 100% → 22% | none → 127d |  |  |
| 21 | 1. Faz Analiz Destek-MS |  | 2018-01-02 A → 2018-01-19 A (+17d) | 29d → 41.39d |  |  |  |  |
| 22 | **Yazılım Geliştirme** |  | 2018-01-02 A → 2018-01-02 |  | 100% → 87% | none → 127d |  |  |
| 23 | Kadro 1. Faz UAT Destek EO |  | 2018-01-02 A → 2018-01-02 |  | 100% → 75% | none → 127d |  |  |
| 29 | **Kadro Simülasyon** | 2017-11-06 A → 2017-07-27 A (-102d) | 2018-11-19 → 2018-06-29 (-143d) | 272d → 242d |  |  |  |  |
| 30 | **Analiz** | 2017-11-06 A → 2017-07-27 A (-102d) | 2018-07-23 → 2018-02-01 (-172d) | 187d → 137d | 25% → 26% | 0d → 35d |  |  |
| 31 | Kadro Simüklasyon Analiz-SA |  | 2018-01-02 A |  | 27% → 100% | 9d → none |  |  |
| 32 | Kadro Simüklasyon Analiz-MS |  | 2018-01-02 A → 2018-01-02 |  | 100% → 35% | none → 57d |  |  |
| 33 | Analiz Rezerve | 2018-01-12 → 2017-07-27 (-169d) | 2018-07-23 → 2018-02-01 (-172d) |  |  | 0d → 35d |  | constraint start no earlier than 2018-01-12 → finish no earlier than 2018-02-01 |
| 34 | **Yazılım Geliştirme** | 2018-07-24 → 2018-02-02 (-172d) | 2018-09-24 → 2018-04-05 (-172d) |  |  | 0d → 35d |  |  |
| 35 | Kadro Simülasyon Yazılım-EO | 2018-07-24 → 2018-02-02 (-172d) | 2018-09-24 → 2018-04-05 (-172d) |  |  | 0d → 35d |  |  |
| 36 | Kadro Simülasyon Yazılım-RK | 2018-07-24 → 2018-02-02 (-172d) | 2018-09-24 → 2018-04-05 (-172d) |  |  | 0d → 35d |  |  |
| 37 | Kadro Simülasyon Yazılım-MD | 2018-07-24 → 2018-02-02 (-172d) | 2018-09-24 → 2018-04-05 (-172d) |  |  | 0d → 35d |  |  |
| 38 | **Test Çalışmaları** | 2018-09-04 → 2018-03-16 (-172d) | 2018-11-19 → 2018-05-10 (-193d) | 55d → 40d |  | 0d → 35d |  |  |
| 39 | Teste Hazırlık-Raporlama | 2018-09-04 → 2018-03-16 (-172d) | 2018-10-11 → 2018-04-24 (-170d) |  |  | 27d → 47d |  |  |
| 40 | Testlerin Gerçekleştirilmesi | 2018-09-25 → 2018-03-16 (-193d) | 2018-11-19 → 2018-05-10 (-193d) |  |  | 0d → 35d | 34 → none |  |
| 42 | (MS) Proje Kapanış | 2018-04-30 → 2018-06-29 (+60d) | 2018-04-30 → 2018-06-29 (+60d) |  |  | 11d → 0d |  | constraint start no earlier than 2018-04-30 → start no earlier than 2018-06-29 |

## Version 3 (saved 2018-03-01, file Plan-6086-Kadro v5.mpp)

Last finish 2018-06-29 → 2018-08-10 (+42d). Complete tasks 13 → 11.

Changed:

| ID | Task | Start | Finish | Duration | Complete | Total float |
| --- | --- | --- | --- | --- | --- | --- |
| 1 | **Kadro Uygulamaları** |  | 2018-06-29 → 2018-08-10 (+42d) | 300d? → 331d? |  |  |
| 11 | **Yönetim** | 2017-11-01 A → 2017-11-03 A (+2d) | 2018-05-14 → 2018-08-10 (+88d) | 140d? → 202d? | 47% → 54% | 33d → 0d |
| 12 | Proje Yönetim Faaliyetleri-GE |  | 2018-02-01 A → 2018-02-01 |  | 100% → 33% | none → 136d |
| 13 | Proje Yönetim Faaliyetleri-KO | 2017-11-01 → 2018-02-12 A (+103d) | 2018-04-30 → 2018-08-10 (+102d) |  |  | 43d → 0d |
| 14 | Yönetici Eforları-AA |  |  |  | 58% → 81% | 41d → 72d |
| 16 | Yönetici Eforları-MO |  |  |  | 39% → 76% | 33d → 64d |
| 17 | Proje Yönetim Faaliyetleri-SD | 2018-02-01 A |  | 38.59d? → 38.66d? | 0% → 26% | 67.41d → 98.34d |
| 29 | **Kadro Simülasyon** |  |  |  | 13% → 6% | 0d → 31d |
| 30 | **Analiz** |  |  |  | 26% → 12% | 35d → 66d |
| 31 | Kadro Simüklasyon Analiz-SA |  | 2018-01-02 A → 2018-01-02 |  | 100% → 27% | none → 88d |

## Version 4 (saved 2018-03-30, file Plan-6086-Kadro v7.mpp)

Last finish 2018-08-10 → 2018-06-29 (-42d). Complete tasks 11 → 13.

Added:

| ID | Task | Duration | Start | Finish | Constraint | Resources |
| --- | --- | --- | --- | --- | --- | --- |
| 38 | Kadro Simülasyon Yazılım-BY | 10d | 2018-03-27 A | 2018-04-09 | start no earlier than 2018-03-19 | ALİ BURAK YİRMİBEŞOĞLU |

Changed:

| ID | Task | Start | Finish | Duration | Complete | Total float | Other |
| --- | --- | --- | --- | --- | --- | --- | --- |
| 1 | **Kadro Uygulamaları** |  | 2018-08-10 → 2018-06-29 (-42d) | 331d? → 301d? | 65% → 72% |  |  |
| 11 | **Yönetim** |  | 2018-08-10 → 2018-05-14 (-88d) | 202d? → 138d? | 54% → 78% | 0d → 34d |  |
| 13 | Proje Yönetim Faaliyetleri-KO |  | 2018-08-10 → 2018-03-27 A (-136d) | 130d → 31.67d | 0% → 100% | 0d → none |  |
| 14 | Yönetici Eforları-AA |  | 2018-05-02 A |  | 81% → 100% | 72d → none |  |
| 17 | Proje Yönetim Faaliyetleri-SD |  |  |  | 26% → 57% | 98.34d → 68.34d |  |
| 29 | **Kadro Simülasyon** |  |  | 242d → 243d | 6% → 9% | 31d → 0d |  |
| 30 | **Analiz** |  |  |  | 12% → 10% | 66d → 25d |  |
| 32 | Kadro Simüklasyon Analiz-MS |  |  |  | 35% → 23% | 88d → 47d | resources Murat Şenaltun [66.7%] → Tuğba Şahin |
| 34 | **Yazılım Geliştirme** | 2018-02-02 → 2018-03-09 A (+35d) | 2018-04-05 → 2018-05-25 (+50d) | 45d → 56d | 0% → 11% | 66d → 0d |  |
| 35 | Kadro Simülasyon Yazılım-EO | 2018-02-02 → 2018-03-26 A (+52d) | 2018-04-05 → 2018-05-25 (+50d) |  | 0% → 8% | 66d → 0d |  |
| 36 | Kadro Simülasyon Yazılım-RK | 2018-02-02 → 2018-03-15 A (+41d) | 2018-04-05 → 2018-05-16 (+41d) |  | 0% → 2% | 66d → 7d |  |
| 37 | Kadro Simülasyon Yazılım-MD | 2018-02-02 → 2018-03-09 A (+35d) | 2018-04-05 → 2018-05-10 (+35d) |  | 0% → 24% | 66d → 11d |  |
| 39 | **Test Çalışmaları** | 2018-03-16 → 2018-05-07 (+52d) | 2018-05-10 → 2018-06-29 (+50d) |  |  | 66d → 0d |  |
| 40 | Teste Hazırlık-Raporlama | 2018-03-16 → 2018-05-07 (+52d) | 2018-04-24 → 2018-06-13 (+50d) |  |  | 78d → 12d |  |
| 41 | Testlerin Gerçekleştirilmesi | 2018-03-16 → 2018-05-07 (+52d) | 2018-05-10 → 2018-06-29 (+50d) |  |  | 66d → 0d |  |
