# Softtech PİP Şablonu

How a schedule from MS Project changed from version to version. A marks actual dates.

## Version 1 (saved 2018-01-15, file Plan-6090-Turnike V3.mpp)

| ID | WBS | Task | Duration | Start | Finish | Predecessors | Complete | Total float | Constraint |
| --- | --- | --- | --- | --- | --- | --- | --- | --- | --- |
| 1 | 1 | **Turnike Rapor Geliştirme** | 605d | 2016-06-13 A | 2018-10-04 |  | 2% | 0d |  |
| 2 | 1.1 | **RPM Geçmiş Kayıtları** | 362d | 2016-06-13 | 2017-10-31 |  |  | 243d |  |
| 3 |  | Proje Yönetim Eski Kayıt | 362d | 2016-06-13 | 2017-10-31 |  |  | 243d | finish no earlier than 2017-10-31 |
| 4 |  | Analiz Eski Kayıt | 362d | 2016-06-13 | 2017-10-31 |  |  | 243d | finish no earlier than 2017-10-31 |
| 5 |  | Teknik Eski Kayıt | 362d | 2016-06-13 | 2017-10-31 |  |  | 243d | finish no earlier than 2017-10-31 |
| 6 |  | KG Eski Kayıt | 362d | 2016-06-13 | 2017-10-31 |  |  | 243d | finish no earlier than 2017-10-31 |
| 7 |  | Testlerin Gerç Eski | 362d | 2016-06-13 | 2017-10-31 |  |  | 243d | finish no earlier than 2017-10-31 |
| 8 | 1.2 | **Yönetim** | 225d | 2017-11-27 A | 2018-10-04 |  | 5% | 0d |  |
| 9 |  | Proje Yönetim Faaliyetleri-GE | 199d | 2017-11-29 A | 2018-08-31 |  | 10% | 24d | finish no earlier than 2018-08-31 |
| 10 |  | Proje Yönetim Faaliyetleri-KO | 201d | 2017-12-29 A | 2018-10-04 |  |  | 0d | start no earlier than 2017-11-27 |
| 11 |  | Yönetici Eforları-AA | 201d | 2017-12-11 A | 2018-09-14 |  | 17% | 14d | finish no earlier than 2018-08-31 |
| 12 |  | Yönetici Eforları-TB | 201d | 2017-11-27 | 2018-08-31 |  |  | 24d | finish no earlier than 2018-08-31 |
| 13 |  | Yönetici Eforları-MO | 201d | 2017-11-27 | 2018-08-31 |  |  | 24d | finish no earlier than 2018-08-31 |
| 14 |  | Proje Canlandırma | 0d | 2017-11-27 | 2017-11-27 |  |  | 3d | start no earlier than 2017-11-27 |
| 15 | 1.4 | **Önceliklendirilmiş Raporlar** | 54.25d | 2017-11-30 A | 2018-02-13 | 14 | 21% | 167.75d |  |
| 16 | 1.4.1 | **Yazılım Geliştirme** | 54.25d | 2017-11-30 A | 2018-02-13 |  | 21% | 167.75d |  |
| 17 |  | 1.Faz Yazılım-RK | 19d | 2017-11-30 A | 2017-12-26 |  | 53% | 203d |  |
| 18 |  | 1.Faz Yazılım-MD | 19d | 2017-12-05 A | 2017-12-29 |  | 23% | 167.75d | start no earlier than 2017-11-01 |
| 19 |  | 1.Faz Yazlım BY | 32.25d | 2017-12-31 | 2018-02-13 | 18 |  | 167.75d | start no earlier than 2017-11-01 |
| 20 |  | (MS) Teslimat Kapanışı | 0d | 2017-12-29 | 2017-12-29 |  |  | 201d | start no earlier than 2017-12-29 |
| 21 | 1.5 | **Kalan Raporlar ve Banka geneline açılacak uygulama** | 120d | 2018-01-15 | 2018-06-29 |  |  | 24d |  |
| 22 | 1.5.1 | **Analiz** | 16d | 2018-01-15 | 2018-02-05 |  |  | 24d |  |
| 23 |  | 2.Faz Analiz-SA | 16d | 2018-01-15 | 2018-02-05 |  |  | 24d | start no earlier than 2018-01-15 |
| 24 |  | 2.Faz Analiz-MS | 16d | 2018-01-15 | 2018-02-05 |  |  | 24d | start no earlier than 2018-01-15 |
| 25 | 1.5.2 | **Yazılım Geliştirme** | 60d | 2018-02-06 | 2018-04-30 | 22 |  | 69d |  |
| 26 |  | 2.Faz Yazılım-MD | 60d | 2018-02-06 | 2018-04-30 |  |  | 69d |  |
| 27 |  | 2.Faz Yazılım-SMA | 60d | 2018-02-06 | 2018-04-30 |  |  | 69d | start no earlier than 2017-11-01 |
| 28 |  | 2.Faz Yazılım-RK | 60d | 2018-02-06 | 2018-04-30 |  |  | 69d | start no earlier than 2017-11-01 |
| 29 |  | 2.Faz Yazılım-BY | 60d | 2018-02-06 | 2018-04-30 |  |  | 69d | start no earlier than 2017-11-01 |
| 30 | 1.5.3 | **Test Çalışmaları** | 45d | 2018-04-10 | 2018-06-11 | 25FS-15d |  | 69d |  |
| 31 |  | Teste Hazırlık-Raporlama | 30d | 2018-04-10 | 2018-05-21 |  |  | 84d | start no earlier than 2017-11-01 |
| 32 |  | Testlerin Gerçekleştirilmesi | 30d | 2018-05-01 | 2018-06-11 | 25 |  | 69d | start no earlier than 2017-11-01 |
| 33 |  | 2.Faz Test Desteği-RK | 0d | 2018-04-30 | 2018-04-30 | 25 |  | 99d | start no earlier than 2018-02-12 |
| 34 |  | (MS) Teslimat Kapanışı | 0d | 2018-06-29 | 2018-06-29 | 30FS+14d |  | 69d | start no earlier than 2018-03-30 |
| 35 | 1.6 | **Atlas Veri Merkezi entegrasyon** | 86d | 2018-04-03 | 2018-07-31 |  |  | 24d |  |
| 36 | 1.6.1 | **Analiz** | 40d | 2018-04-03 | 2018-05-28 |  |  | 24d |  |
| 37 |  | 3.Faz Analiz-SA | 40d | 2018-04-03 | 2018-05-28 | 22FS+40d |  | 24d | start no earlier than 2017-11-01 |
| 38 | 1.6.2 | **Yazılım Geliştirme** | 20d | 2018-05-29 | 2018-06-25 | 36 |  | 24d |  |
| 39 |  | 3.Faz Yazılım-RK | 20d | 2018-05-29 | 2018-06-25 |  |  | 24d | start no earlier than 2017-11-01 |
| 40 |  | 3.Faz Yazılım-BY | 20d | 2018-05-29 | 2018-06-25 |  |  | 24d | start no earlier than 2017-11-01 |
| 41 | 1.6.3 | **Test Çalışmaları** | 35d | 2018-06-05 | 2018-07-23 | 38FS-15d |  | 24d |  |
| 42 |  | Teste Hazırlık-Raporlama | 20d | 2018-06-05 | 2018-07-02 |  |  | 39d | start no earlier than 2017-11-01 |
| 43 |  | Testlerin Gerçekleştirilmesi | 20d | 2018-06-26 | 2018-07-23 | 38 |  | 24d | start no earlier than 2017-11-01 |
| 44 |  | (MS) Teslimat Kapanışı | 0d | 2018-07-31 | 2018-07-31 | 41FS+6d |  | 24d | start no earlier than 2018-03-30 |
| 45 |  | (MS) Proje Kapanış | 0d | 2018-08-31 | 2018-08-31 | 44FS+23d |  | 24d | start no earlier than 2018-04-30 |

## Version 2 (saved 2018-02-01, file Plan-6090-Turnike V4.mpp)

Last finish stays 2018-10-04. Complete tasks 0 → 1.

Added:

| ID | Task | Duration | Start | Finish | Constraint | Resources |
| --- | --- | --- | --- | --- | --- | --- |
| 14 | Proje Yönetim Faaliyetleri-SD | 19.85d? | 2018-02-01 | 2018-02-28 | start no earlier than 2018-02-01 | Serhat Değirmenci |

Changed:

| ID | Task | Finish | Duration | Complete | Total float |
| --- | --- | --- | --- | --- | --- |
| 1 | **Turnike Rapor Geliştirme** |  | 605d → 605d? | 2% → 7% |  |
| 8 | **Yönetim** |  | 225d → 225d? | 5% → 23% |  |
| 9 | Proje Yönetim Faaliyetleri-GE | 2018-08-31 A |  | 10% → 100% | 24d → none |

## Version 3 (saved 2018-03-01, file Plan-6090-Turnike V5.mpp)

Last finish 2018-10-04 → 2018-12-04 (+61d). Complete tasks 1 → 2.

Changed:

| ID | Task | Start | Finish | Duration | Complete | Total float |
| --- | --- | --- | --- | --- | --- | --- |
| 1 | **Turnike Rapor Geliştirme** |  | 2018-10-04 → 2018-12-04 (+61d) | 605d? → 648d? | 7% → 32% |  |
| 2 | **RPM Geçmiş Kayıtları** | 2016-06-13 A |  |  | 0% → 31% | 243d → 286d |
| 3 | Proje Yönetim Eski Kayıt | 2016-06-13 A |  |  | 0% → 14% | 243d → 286d |
| 4 | Analiz Eski Kayıt | 2016-06-13 A |  |  | 0% → 14% | 243d → 286d |
| 5 | Teknik Eski Kayıt | 2016-06-13 A |  |  | 0% → 14% | 243d → 286d |
| 6 | KG Eski Kayıt | 2016-06-13 A |  |  | 0% → 14% | 243d → 286d |
| 7 | Testlerin Gerç Eski | 2016-06-13 A | 2017-10-31 A |  | 0% → 100% | 243d → none |
| 8 | **Yönetim** | 2017-11-27 A → 2017-11-29 A (+2d) | 2018-10-04 → 2018-12-04 (+61d) | 225d? → 266d? | 23% → 47% |  |
| 10 | Proje Yönetim Faaliyetleri-KO |  |  |  | 0% → 83% | 0d → 43d |
| 11 | Yönetici Eforları-AA |  |  |  | 17% → 39% | 14d → 57d |
| 12 | Yönetici Eforları-TB | 2017-11-27 → 2018-02-12 A (+77d) | 2018-08-31 → 2018-11-19 (+80d) |  |  | 24d → 11d |
| 13 | Yönetici Eforları-MO | 2017-11-27 → 2018-02-27 A (+92d) | 2018-08-31 → 2018-12-04 (+95d) |  | 0% → 15% | 24d → 0d |
| 14 | Proje Yönetim Faaliyetleri-SD | 2018-02-01 A |  |  | 0% → 35% | 156.15d → 199.15d |
| 22 | **Kalan Raporlar ve Banka geneline açılacak uygulama** | 2018-01-15 A | 2018-06-29 → 2018-08-03 (+35d) | 120d → 145d | 0% → 2% | 24d → 87d |
| 23 | **Analiz** | 2018-01-15 A | 2018-02-05 → 2018-03-12 (+35d) | 16d → 41d | 0% → 17% | 24d → 42d |
| 24 | 2.Faz Analiz-SA | 2018-01-15 → 2018-02-19 A (+35d) | 2018-02-05 → 2018-03-12 (+35d) |  | 0% → 34% | 24d → 42d |
| 26 | **Yazılım Geliştirme** | 2018-02-06 → 2018-03-13 (+35d) | 2018-04-30 → 2018-06-04 (+35d) |  |  | 69d → 87d |
| 27 | 2.Faz Yazılım-MD | 2018-02-06 → 2018-03-13 (+35d) | 2018-04-30 → 2018-06-04 (+35d) |  |  | 69d → 87d |
| 28 | 2.Faz Yazılım-SMA | 2018-02-06 → 2018-03-13 (+35d) | 2018-04-30 → 2018-06-04 (+35d) |  |  | 69d → 87d |
| 29 | 2.Faz Yazılım-RK | 2018-02-06 → 2018-03-13 (+35d) | 2018-04-30 → 2018-06-04 (+35d) |  |  | 69d → 87d |
| 30 | 2.Faz Yazılım-BY | 2018-02-06 → 2018-03-13 (+35d) | 2018-04-30 → 2018-06-04 (+35d) |  |  | 69d → 87d |
| 31 | **Test Çalışmaları** | 2018-04-10 → 2018-05-15 (+35d) | 2018-06-11 → 2018-07-16 (+35d) |  |  | 69d → 87d |
| 32 | Teste Hazırlık-Raporlama | 2018-04-10 → 2018-05-15 (+35d) | 2018-05-21 → 2018-06-25 (+35d) |  |  | 84d → 102d |
| 33 | Testlerin Gerçekleştirilmesi | 2018-05-01 → 2018-06-05 (+35d) | 2018-06-11 → 2018-07-16 (+35d) |  |  | 69d → 87d |
| 34 | 2.Faz Test Desteği-RK | 2018-04-30 → 2018-06-04 (+35d) | 2018-04-30 → 2018-06-04 (+35d) |  |  | 99d → 117d |
| 35 | (MS) Teslimat Kapanışı | 2018-06-29 → 2018-08-03 (+35d) | 2018-06-29 → 2018-08-03 (+35d) |  |  | 69d → 87d |
| 36 | **Atlas Veri Merkezi entegrasyon** | 2018-04-03 → 2018-05-08 (+35d) | 2018-07-31 → 2018-09-04 (+35d) |  |  | 24d → 42d |
| 37 | **Analiz** | 2018-04-03 → 2018-05-08 (+35d) | 2018-05-28 → 2018-07-02 (+35d) |  |  | 24d → 42d |
| 38 | 3.Faz Analiz-SA | 2018-04-03 → 2018-05-08 (+35d) | 2018-05-28 → 2018-07-02 (+35d) |  |  | 24d → 42d |
| 39 | **Yazılım Geliştirme** | 2018-05-29 → 2018-07-03 (+35d) | 2018-06-25 → 2018-07-30 (+35d) |  |  | 24d → 42d |
| 40 | 3.Faz Yazılım-RK | 2018-05-29 → 2018-07-03 (+35d) | 2018-06-25 → 2018-07-30 (+35d) |  |  | 24d → 42d |
| 41 | 3.Faz Yazılım-BY | 2018-05-29 → 2018-07-03 (+35d) | 2018-06-25 → 2018-07-30 (+35d) |  |  | 24d → 42d |
| 42 | **Test Çalışmaları** | 2018-06-05 → 2018-07-10 (+35d) | 2018-07-23 → 2018-08-27 (+35d) |  |  | 24d → 42d |
| 43 | Teste Hazırlık-Raporlama | 2018-06-05 → 2018-07-10 (+35d) | 2018-07-02 → 2018-08-06 (+35d) |  |  | 39d → 57d |
| 44 | Testlerin Gerçekleştirilmesi | 2018-06-26 → 2018-07-31 (+35d) | 2018-07-23 → 2018-08-27 (+35d) |  |  | 24d → 42d |
| 45 | (MS) Teslimat Kapanışı | 2018-07-31 → 2018-09-04 (+35d) | 2018-07-31 → 2018-09-04 (+35d) |  |  | 24d → 42d |
| 46 | (MS) Proje Kapanış | 2018-08-31 → 2018-10-05 (+35d) | 2018-08-31 → 2018-10-05 (+35d) |  |  | 24d → 42d |

## Version 4 (saved 2018-03-30, file Plan-6090-Turnike V6.mpp)

Last finish stays 2018-12-04. Complete tasks 2 → 3.

Changed:

| ID | Task | Finish | Duration | Complete | Total float |
| --- | --- | --- | --- | --- | --- |
| 8 | **Yönetim** |  |  | 47% → 51% |  |
| 10 | Proje Yönetim Faaliyetleri-KO | 2018-10-04 → 2018-03-21 A (-197d) | 201d → 60d | 83% → 100% | 43d → none |
| 11 | Yönetici Eforları-AA |  |  | 39% → 42% |  |
| 13 | Yönetici Eforları-MO |  |  | 15% → 44% |  |
| 14 | Proje Yönetim Faaliyetleri-SD |  |  | 35% → 86% |  |
